Schedule from MS Project, 2025-09-04 to 2025-10-24, costs in $, A marks actual dates.

## Calendars

- Standard: Mon-Fri 08:00-12:00, 13:00-17:00; Sat-Sun off.

## Resources

| Resource | Rate |
| --- | --- |
| Julio | 20 |
| Aquiba | 23 |
| Diego | 21 |
| Jin | 20 |
| PM |  |

## Schedule

| ID | WBS | Task | Type | Duration | Start | Finish | Predecessors | Complete | Remaining | Total slack | Constraint | Resources | Work | Actual work | Cost | Actual cost |
| --- | --- | --- | --- | --- | --- | --- | --- | --- | --- | --- | --- | --- | --- | --- | --- | --- |
| 1 | 1 | **Mi proyecto** |  | 37d | 2025-09-04 A | 2025-10-24 |  | 51% | 18d | 0d |  |  | 602.4h | 346.4h | 12,671.2 | 7,167.2 |
| 2 | 1.1 | **Análisis** |  | 5d | 2025-09-04 A | 2025-09-11 A |  | 100% |  |  |  |  | 62.4h | 62.4h | 1,307.2 | 1,307.2 |
| 3 | 1.1.1 | Elicitación |  | 1d | 2025-09-04 A | 2025-09-04 A |  | 100% |  |  |  | Julio; Aquiba; Diego; Jin | 8h | 8h | 160 | 160 |
| 4 | 1.1.2 | Análisis |  | 1d | 2025-09-05 A | 2025-09-05 A | 3 | 100% |  |  |  | Aquiba; Diego; Jin; Julio | 8h | 8h | 184 | 184 |
| 5 | 1.1.3 | Especificación |  | 1d | 2025-09-08 A | 2025-09-08 A | 4 | 100% |  |  |  | Diego; Aquiba; Jin; Julio | 8h | 8h | 168 | 168 |
| 6 | 1.1.4 | Validación |  | 1d | 2025-09-09 A | 2025-09-09 A | 5 | 100% |  |  |  | Jin; Aquiba; Diego; Julio | 8h | 8h | 160 | 160 |
| 7 | 1.1.5 | Elaborar SRS |  | 1d | 2025-09-10 A | 2025-09-10 A | 6 | 100% |  |  |  | Diego; Aquiba; Jin; Julio | 30.4h | 30.4h | 635.2 | 635.2 |
| 8 | 1.1.6 | SRS | milestone | 0d | 2025-09-11 A | 2025-09-11 A | 7 | 100% |  |  |  | PM |  |  |  |  |
| 9 | 1.2 | **Diseño** |  | 4d | 2025-09-11 A | 2025-09-16 A | 2 | 100% |  |  |  |  | 124h | 124h | 2,596 | 2,596 |
| 10 | 1.2.1 | Arquitectura técnica |  | 2d | 2025-09-11 A | 2025-09-12 A |  | 100% |  |  |  | Julio; Aquiba; Jin; Diego | 64h | 64h | 1,344 | 1,344 |
| 11 | 1.2.2 | Diseño interfaces |  | 2d | 2025-09-15 A | 2025-09-16 A | 10 | 100% |  |  |  | Julio; Aquiba; Diego; Jin | 60h | 60h | 1,252 | 1,252 |
| 12 | 1.2.3 | Plantillas de Diseño de Interfaces | milestone | 0d | 2025-09-16 A | 2025-09-16 A | 11 | 100% |  |  |  | PM |  |  |  |  |
| 13 | 1.3 | **Construcción** |  | 26d | 2025-09-17 A | 2025-10-22 | 9 | 38% | 16d | 0d |  |  | 352h | 160h | 7,424 | 3,264 |
| 14 | 1.3.1 | **FrontEnd** |  | 10d | 2025-09-17 A | 2025-09-30 A |  | 100% |  |  |  |  | 160h | 160h | 3,264 | 3,264 |
| 15 | 1.3.1.1 | Login y control de accesos |  | 2d | 2025-09-17 A | 2025-09-18 A |  | 100% |  |  |  | Jin; Julio | 32h | 32h | 640 | 640 |
| 16 | 1.3.1.2 | Formulario de reportes |  | 3d | 2025-09-19 A | 2025-09-23 A | 15 | 100% |  |  |  | Jin; Julio | 48h | 48h | 960 | 960 |
| 17 | 1.3.1.3 | Formulario de notas |  | 2d | 2025-09-24 A | 2025-09-25 A | 16 | 100% |  |  |  | Aquiba; Diego | 32h | 32h | 704 | 704 |
| 18 | 1.3.1.4 | Panel de estadísticas |  | 3d | 2025-09-26 A | 2025-09-30 A | 16, 17 | 100% |  |  |  | Jin; Julio | 48h | 48h | 960 | 960 |
| 19 | 1.3.1.5 | Frontend | milestone | 0d | 2025-09-30 A | 2025-09-30 A | 18 | 100% |  |  | start no earlier than 2025-09-30 | PM |  |  |  |  |
| 20 | 1.3.2 | **Backend** |  | 5d | 2025-10-01 | 2025-10-07 | 14 |  |  | 0d |  |  | 80h |  | 1,760 |  |
| 21 | 1.3.2.1 | API Rest |  | 3d | 2025-10-01 | 2025-10-03 |  |  |  | 0d |  | Aquiba; Diego | 48h |  | 1,056 |  |
| 22 | 1.3.2.2 | Seguridad de credenciales |  | 2d | 2025-10-06 | 2025-10-07 | 21 |  |  | 0d |  | Aquiba; Diego | 32h |  | 704 |  |
| 23 | 1.3.2.3 | Backend | milestone | 0d | 2025-10-07 | 2025-10-07 | 22 |  |  | 0d | start no earlier than 2025-10-07 | PM |  |  |  |  |
| 24 | 1.3.3 | **Base de datos** |  | 3d | 2025-10-08 | 2025-10-10 | 20 |  |  | 0d |  |  | 48h |  | 1,056 |  |
| 25 | 1.3.3.1 | Creación de colecciones |  | 2d | 2025-10-08 | 2025-10-09 |  |  |  | 0d | as late as possible | Aquiba; Diego | 32h |  | 704 |  |
| 26 | 1.3.3.2 | Integración de BD con API |  | 1d | 2025-10-10 | 2025-10-10 | 25 |  |  | 0d |  | Aquiba; Diego | 16h |  | 352 |  |
| 27 | 1.3.3.3 | Base de datos | milestone | 0d | 2025-10-10 | 2025-10-10 | 26 |  |  | 0d |  | PM |  |  |  |  |

| ID | WBS | Task | Type | Duration | Start | Finish | Predecessors | Total slack | Resources | Work | Cost |
| --- | --- | --- | --- | --- | --- | --- | --- | --- | --- | --- | --- |
| 28 | 1.3.4 | **Pruebas** |  | 8d | 2025-10-13 | 2025-10-22 | 24 | 0d |  | 64h | 1,344 |
| 29 | 1.3.4.1 | Pruebas de Frontend/Backend |  | 2d | 2025-10-13 | 2025-10-14 |  | 0d | Aquiba | 16h | 368 |
| 30 | 1.3.4.2 | Pruebas de integración BD con app |  | 2d | 2025-10-15 | 2025-10-16 | 29 | 0d | Diego | 16h | 336 |
| 31 | 1.3.4.3 | Validación de accesibilidad |  | 2d | 2025-10-17 | 2025-10-20 | 30 | 0d | Julio | 16h | 320 |
| 32 | 1.3.4.4 | Ajustes finales |  | 2d | 2025-10-21 | 2025-10-22 | 30, 31 | 0d | Jin | 16h | 320 |
| 33 | 1.3.4.5 | Documento Pruebas | milestone | 0d | 2025-10-22 | 2025-10-22 | 32 | 0d | PM |  |  |
| 34 | 1.4 | **Implantación** |  | 2d | 2025-10-23 | 2025-10-24 | 28, 13 | 0d |  | 64h | 1,344 |
| 35 | 1.4.1 | Documentación final |  | 2d | 2025-10-23 | 2025-10-24 |  | 0d | Aquiba; Diego; Jin; Julio | 64h | 1,344 |
| 36 | 1.4.2 | Presentación del MVP | milestone | 0d | 2025-10-24 | 2025-10-24 | 35 | 0d | Aquiba; Diego; Jin; Julio |  |  |
